# Diagrama de Gantt

Schedule from MS Project, 2018-10-13 to 2019-12-03, 4 hours a day.

## Calendars

- Estándar: Mon-Fri 07:00-11:00; Sat-Sun off.

## Resources

| Resource | Group | Rate |
| --- | --- | --- |
| Anderson Stiven Yaguma Diaz | Programador | 20000 |
| Jhostin David Cespedes Campo | Programador | 20000 |
| Otoniel Hernández Garzon |  | 20000 |
| b | asdfasdfad |  |
| equipos |  | 4500000 |
| sillas |  | 540000 |
| mesas |  | 1590000 |
| servicios basicos |  | 1400000 |

## Schedule

| ID | WBS | Task | Type | Duration | Start | Finish | Predecessors | Total slack |
| --- | --- | --- | --- | --- | --- | --- | --- | --- |
| 1 | 1 | **Proyecto** |  | 297d | 2018-10-13 | 2019-12-03 |  | 0d |
| 2 | 1.1 | **Análisis y Planeación** |  | 37d | 2018-10-13 | 2018-12-04 |  | 0d |
| 3 | 1.1.1 | Programación estructurada | milestone | 0d | 2018-10-13 | 2018-10-13 |  | 0d |
| 4 | 1.1.2 | Levantamiento de información | milestone | 0d | 2018-10-13 | 2018-10-13 | 3 | 0d |
| 5 | 1.1.3 | Aplicación de técnica de levantamiento de información |  | 5d | 2018-10-15 | 2018-10-19 | 4 | 0d |
| 6 | 1.1.4 | Análisis de la información |  | 5d | 2018-10-22 | 2018-10-26 | 5 | 0d |
| 7 | 1.1.5 | **Componente Metodológico** |  | 27d | 2018-10-29 | 2018-12-04 | 6 | 0d |
| 8 | 1.1.5.1 | Nombre del proyecto |  | 4d | 2018-10-29 | 2018-11-01 |  | 0d |
| 9 | 1.1.5.2 | Objetivo General |  | 5d | 2018-11-02 | 2018-11-08 | 8 | 0d |
| 10 | 1.1.5.3 | Objetivo Específicos |  | 5d | 2018-11-09 | 2018-11-15 | 9 | 0d |
| 11 | 1.1.5.4 | Planteamiento del Problema |  | 6d | 2018-11-16 | 2018-11-23 | 10 | 0d |
| 12 | 1.1.5.5 | Alcance del proyecto |  | 4d | 2018-11-26 | 2018-11-29 | 11 | 0d |
| 13 | 1.1.5.6 | Justificación |  | 3d | 2018-11-30 | 2018-12-04 | 12 | 0d |
| 14 | 1.2 | Receso |  | 35d | 2018-12-05 | 2019-01-22 | 7 | 0d |
| 15 | 1.3 | **Diseño** |  | 50d | 2019-01-23 | 2019-04-02 | 14 | 0d |
| 16 | 1.3.1 | Requerimientos Funcionales |  | 5d | 2019-01-23 | 2019-01-29 |  | 0d |
| 17 | 1.3.2 | Requerimientos No Funcionales |  | 5d | 2019-01-30 | 2019-02-05 | 16 | 0d |
| 18 | 1.3.3 | BPMN |  | 5d | 2019-02-06 | 2019-02-12 | 17 | 0d |
| 19 | 1.3.4 | Modelo Entidad Relación |  | 5d | 2019-02-13 | 2019-02-19 | 18 | 0d |
| 20 | 1.3.5 | Diagrama de Entidad y Relación |  | 10d | 2019-02-20 | 2019-03-05 | 19 | 0d |
| 21 | 1.3.6 | Diagramas UML |  | 5d | 2019-03-06 | 2019-03-12 | 20 | 0d |
| 22 | 1.3.7 | Normalización de bases de datos |  | 5d | 2019-03-13 | 2019-03-19 | 21 | 0d |
| 23 | 1.3.8 | Prototipos y Mockup |  | 10d | 2019-03-20 | 2019-04-02 | 22 | 0d |
| 24 | 1.4 | Semana santa |  | 11d | 2019-04-03 | 2019-04-17 | 23 | 0d |

| ID | WBS | Task | Duration | Start | Finish | Predecessors | Total slack |
| --- | --- | --- | --- | --- | --- | --- | --- |
| 25 | 1.5 | **Desarrollo Etapa 1** | 23d | 2019-04-18 | 2019-05-20 | 24 | 0d |
| 26 | 1.5.1 | Base de datos | 6d | 2019-04-18 | 2019-04-25 |  | 0d |
| 27 | 1.5.2 | Construcción de la Base de Datos | 6d | 2019-04-26 | 2019-05-03 | 26 | 0d |
| 28 | 1.5.3 | Datos insertados en la Base de Datos | 6d | 2019-05-06 | 2019-05-13 | 27 | 0d |
| 29 | 1.5.4 | Consultas y Join en la Base y Datos | 5d | 2019-05-14 | 2019-05-20 | 28 | 0d |
| 30 | 1.6 | Receso | 21d | 2019-05-21 | 2019-06-18 | 29 | 0d |
| 31 | 1.7 | **Desarrollo Etapa 2** | 30d | 2019-06-19 | 2019-07-30 | 30 | 0d |
| 32 | 1.7.1 | Codificación y CRUD | 10d | 2019-06-19 | 2019-07-02 |  | 0d |
| 33 | 1.7.2 | Conexión de base de datos | 10d | 2019-07-03 | 2019-07-16 | 32 | 0d |
| 34 | 1.7.3 | CRUD Funcional módulos del sistema | 10d | 2019-07-17 | 2019-07-30 | 33 | 0d |
| 35 | 1.8 | **Prueba de Software** | 40d | 2019-07-31 | 2019-09-24 | 34 | 0d |
| 36 | 1.8.1 | Prueba de caja negra | 10d | 2019-07-31 | 2019-08-13 |  | 0d |
| 37 | 1.8.2 | prueba de caja blanca | 10d | 2019-08-14 | 2019-08-27 | 36 | 0d |
| 38 | 1.8.3 | prueba de estrés | 10d | 2019-08-28 | 2019-09-10 | 37 | 0d |
| 39 | 1.8.4 | prueba de unitaria | 10d | 2019-09-11 | 2019-09-24 | 38 | 0d |
| 40 | 1.9 | **Modelo De Calidad** | 50d | 2019-09-25 | 2019-12-03 | 39 | 0d |
| 41 | 1.9.1 | Formatos de calidad | 10d | 2019-09-25 | 2019-10-08 |  | 0d |
| 42 | 1.9.2 | Elaboración de contratos | 10d | 2019-10-09 | 2019-10-22 | 41 | 0d |
| 43 | 1.9.3 | Construcción de calidad de usuario y operación | 30d | 2019-10-23 | 2019-12-03 | 42 | 0d |
